# 3CM1_IS_T11_Haru_Corp2

Schedule from MS Project, 2014-09-24 to 2015-06-19, status date 2015-01-09, A marks actual dates.

## Calendars

- 3Horas: Mon off; Tue 20:00-21:00; Wed 16:00-20:00; Thu-Fri 20:00-21:00; Sat 17:00-20:00; Sun 11:00-14:00.
- nuevo cal: Mon-Wed 10:00-11:00; Thu 10:00-11:00, 14:00-15:00; Fri 10:00-11:00, 13:00-14:00; Sat-Sun off.

## Schedule

| ID | WBS | Task | Duration | Start | Finish | Predecessors | Complete | Remaining | Actual start | Total slack | Responsable |
| --- | --- | --- | --- | --- | --- | --- | --- | --- | --- | --- | --- |
| 1 | 1 | **Proyecto** | 20.12d | 2015-01-12 08:00 | 2015-06-18 15:00 |  | 24% | 15.28d | 2014-09-24 16:00 |  |  |
| 2 | 1.1 | **Requerimientos** | 0.88d | 2015-01-12 10:00 A | 2015-01-16 14:00 A |  | 100% |  |  |  |  |
| 3 | 1.1.1 | Levantar requerimientos del sistema | 3h | 2015-01-12 10:00 A | 2015-01-14 11:00 A |  | 100% |  |  |  | EJTR,RGR,LCS,AATG |
| 4 | 1.1.2 | Documento de requerimientos | 4h | 2015-01-15 10:00 A | 2015-01-16 14:00 A | 3 | 100% |  |  |  | EJTR,RGR,LCS,AATG |
| 5 | 1.2 | **Análisis y modelos** | 5.12d | 2015-01-12 10:00 A | 2015-02-20 11:00 |  | 84% | 0.82d |  | 14.75d |  |
| 6 | 1.2.1 | **Alta de alumno** | 0.5d | 2015-01-19 10:00 A | 2015-01-22 11:00 A |  | 100% |  |  |  |  |
| 7 | 1.2.1.1 | Diagrama de flujo | 1h | 2015-01-19 10:00 A | 2015-01-19 11:00 A | 4 | 100% |  |  |  | AATG |
| 8 | 1.2.1.2 | Crear prueba 1 | 1h | 2015-01-20 10:00 A | 2015-01-20 11:00 A | 7 | 100% |  |  |  | AATG |
| 9 | 1.2.1.3 | Crear prueba 2 | 1h | 2015-01-21 10:00 A | 2015-01-21 11:00 A | 8 | 100% |  |  |  | AATG |
| 10 | 1.2.1.4 | Crear prueba 3 | 1h | 2015-01-22 10:00 A | 2015-01-22 11:00 A | 9 | 100% |  |  |  | AATG |
| 11 | 1.2.2 | **Estado de actividades** | 1.62d | 2015-01-19 10:00 A | 2015-01-30 11:00 A |  | 100% |  |  |  |  |
| 12 | 1.2.2.1 | Diagrama de flujo | 3h | 2015-01-19 10:00 A | 2015-01-21 11:00 A | 4 | 100% |  |  |  | RGR |
| 13 | 1.2.2.2 | Crear prueba 1 | 4h | 2015-01-22 10:00 A | 2015-01-23 14:00 A | 12 | 100% |  |  |  | RGR |
| 14 | 1.2.2.3 | Crear prueba 2 | 3h | 2015-01-26 10:00 A | 2015-01-28 11:00 A | 13 | 100% |  |  |  | RGR |
| 15 | 1.2.2.4 | Crear prueba 3 | 3h | 2015-01-29 10:00 A | 2015-01-30 11:00 A | 14 | 100% |  |  |  | RGR |
| 16 | 1.2.3 | **Alta de actividad** | 0.5d | 2015-01-22 14:00 A | 2015-01-26 11:00 A |  | 100% |  |  |  |  |
| 17 | 1.2.3.1 | Diagrama de flujo | 1h | 2015-01-22 14:00 A | 2015-01-22 15:00 A | 10 | 100% |  |  |  | AATG |
| 18 | 1.2.3.2 | Crear prueba 1 | 1h | 2015-01-23 10:00 A | 2015-01-23 11:00 A | 17 | 100% |  |  |  | AATG |
| 19 | 1.2.3.3 | Crear prueba 2 | 1h | 2015-01-23 13:00 A | 2015-01-23 14:00 A | 18 | 100% |  |  |  | AATG |
| 20 | 1.2.3.4 | Crear prueba 3 | 1h | 2015-01-26 10:00 A | 2015-01-26 11:00 A | 19 | 100% |  |  |  | AATG |
| 21 | 1.2.4 | **Acceso al sistema** | 0.38d | 2015-01-30 13:00 A | 2015-02-03 11:00 A |  | 100% |  |  |  |  |
| 22 | 1.2.4.1 | Crear prueba 1 | 1h | 2015-01-30 13:00 A | 2015-01-30 14:00 A | 15 | 100% |  |  |  | RGR |
| 23 | 1.2.4.2 | Crear prueba 2 | 1h | 2015-02-02 10:00 A | 2015-02-02 11:00 A | 22 | 100% |  |  |  | RGR |
| 24 | 1.2.4.3 | Crear prueba 3 | 1h | 2015-02-03 10:00 A | 2015-02-03 11:00 A | 23 | 100% |  |  |  | RGR |

Notes:
- 3: M
- 7: B
- 8: B
- 9: B
- 10: B
- 12: M
- 13: M
- 14: M
- 15: M
- 17: B
- 18: B
- 19: B
- 20: B
- 22: B
- 23: B
- 24: B

| ID | WBS | Task | Duration | Start | Finish | Predecessors | Complete | Responsable |
| --- | --- | --- | --- | --- | --- | --- | --- | --- |
| 25 | 1.2.5 | **Modalidad presencial** | 1.62d | 2015-01-19 10:00 A | 2015-01-30 11:00 A |  | 100% |  |
| 26 | 1.2.5.1 | Diagrama de flujo | 3h | 2015-01-19 10:00 A | 2015-01-21 11:00 A | 4 | 100% | LCS |
| 27 | 1.2.5.2 | Crear prueba 1 | 4h | 2015-01-22 10:00 A | 2015-01-23 14:00 A | 26 | 100% | LCS |
| 28 | 1.2.5.3 | Crear prueba 2 | 3h | 2015-01-26 10:00 A | 2015-01-28 11:00 A | 27 | 100% | LCS |
| 29 | 1.2.5.4 | Crear prueba 3 | 3h | 2015-01-29 10:00 A | 2015-01-30 11:00 A | 28 | 100% | LCS |
| 30 | 1.2.6 | **Modalidad no presencial** | 1.62d | 2015-01-27 10:00 A | 2015-02-06 14:00 A |  | 100% |  |
| 31 | 1.2.6.1 | Diagrama de flujo | 3h | 2015-01-27 10:00 A | 2015-01-29 11:00 A | 20 | 100% | AATG |
| 32 | 1.2.6.2 | Crear prueba 1 | 4h | 2015-01-29 14:00 A | 2015-02-02 11:00 A | 31 | 100% | AATG |
| 33 | 1.2.6.3 | Crear prueba 2 | 3h | 2015-02-03 10:00 A | 2015-02-05 11:00 A | 32 | 100% | AATG |
| 34 | 1.2.6.4 | Crear prueba 3 | 3h | 2015-02-05 14:00 A | 2015-02-06 14:00 A | 33 | 100% | AATG |
| 35 | 1.2.7 | **Agregar alumno al curso** | 0.5d | 2015-01-30 13:00 A | 2015-02-04 11:00 A |  | 100% |  |
| 36 | 1.2.7.1 | Diagrama de flujo | 1h | 2015-01-30 13:00 A | 2015-01-30 14:00 A | 29 | 100% | LCS |
| 37 | 1.2.7.2 | Crear prueba 1 | 1h | 2015-02-02 10:00 A | 2015-02-02 11:00 A | 36 | 100% | LCS |
| 38 | 1.2.7.3 | Crear prueba 2 | 1h | 2015-02-03 10:00 A | 2015-02-03 11:00 A | 37 | 100% | LCS |
| 39 | 1.2.7.4 | Crear prueba 3 | 1h | 2015-02-04 10:00 A | 2015-02-04 11:00 A | 38 | 100% | LCS |
| 40 | 1.2.8 | **Reporte de lista** | 2d | 2015-01-19 10:00 A | 2015-02-03 11:00 A |  | 100% |  |
| 41 | 1.2.8.1 | Diagrama de flujo | 3h | 2015-01-19 10:00 A | 2015-01-21 11:00 A | 4 | 100% | EJTR |
| 42 | 1.2.8.2 | Crear prueba 1 | 5h | 2015-01-22 10:00 A | 2015-01-26 11:00 A | 41 | 100% | EJTR |
| 43 | 1.2.8.3 | Crear prueba 2 | 4h | 2015-01-27 10:00 A | 2015-01-29 15:00 A | 42 | 100% | EJTR |
| 44 | 1.2.8.4 | Crear prueba 3 | 4h | 2015-01-30 10:00 A | 2015-02-03 11:00 A | 43 | 100% | EJTR |
| 45 | 1.2.9 | **Constancia** | 1.75d | 2015-02-04 10:00 A | 2015-02-17 11:00 A |  | 100% |  |
| 46 | 1.2.9.1 | Diagrama de flujo | 2h | 2015-02-04 10:00 A | 2015-02-05 11:00 A | 44 | 100% | EJTR |
| 47 | 1.2.9.2 | Crear prueba 1 | 4h | 2015-02-05 14:00 A | 2015-02-09 11:00 A | 46 | 100% | EJTR |
| 48 | 1.2.9.3 | Crear prueba 2 | 4h | 2015-02-10 10:00 A | 2015-02-12 15:00 A | 47 | 100% | EJTR |
| 49 | 1.2.9.4 | Crear prueba 3 | 4h | 2015-02-13 10:00 A | 2015-02-17 11:00 A | 48 | 100% | EJTR |

Notes:
- 26: A
- 27: M
- 28: M
- 29: M
- 31: A
- 32: M
- 33: M
- 34: M
- 36: B
- 37: B
- 38: B
- 39: B
- 41: A
- 42: A
- 43: A
- 44: A
- 46: A
- 47: A
- 48: A
- 49: A

| ID | WBS | Task | Duration | Start | Finish | Predecessors | Complete | Remaining | Total slack | Free slack | Responsable |
| --- | --- | --- | --- | --- | --- | --- | --- | --- | --- | --- | --- |
| 50 | 1.2.10 | **Crear prototipo** | 1d | 2015-02-04 10:00 A | 2015-02-11 11:00 |  | 90% | 0.1d | 14.25d |  |  |
| 51 | 1.2.10.1 | Alta de alumno | 1h | 2015-02-09 10:00 A | 2015-02-09 11:00 A | 34 | 100% |  |  |  | AATG |
| 52 | 1.2.10.2 | Estado de actividades | 1h | 2015-02-04 10:00 A | 2015-02-04 11:00 A | 24 | 100% |  |  |  | RGR |
| 53 | 1.2.10.3 | Alta de actividad | 1h | 2015-02-10 10:00 A | 2015-02-10 11:00 A | 51 | 100% |  |  |  | AATG |
| 54 | 1.2.10.4 | Acceso al sistema | 1h | 2015-02-05 10:00 A | 2015-02-05 11:00 A | 52 | 100% |  |  |  | RGR |
| 55 | 1.2.10.5 | Modalidad presencial | 1h | 2015-02-05 10:00 A | 2015-02-05 11:00 A | 39 | 100% |  |  |  | LCS |
| 56 | 1.2.10.6 | Modalidad no presencial | 1h | 2015-02-11 10:00 A | 2015-02-11 11:00 A | 53 | 100% |  |  |  | AATG |
| 57 | 1.2.10.7 | Agregar alumno al curso | 1h | 2015-02-05 14:00 A | 2015-02-05 15:00 A | 55 | 100% |  |  |  | LCS |
| 58 | 1.2.10.8 | Reporte de lista | 1h | 2015-02-04 10:00 A | 2015-02-04 11:00 A | 44 | 100% |  |  |  | EJTR |
| 59 | 1.2.10.9 | Constancia | 1h | 2015-02-05 10:00 A | 2015-02-05 11:00 A | 58 | 100% |  |  |  | EJTR |
| 60 | 1.2.10.10 | Integracion de prototipos | 1h | 2015-02-05 14:00 | 2015-02-05 15:00 | 59 |  |  | 14.88d | 0d | EJTR |
| 61 | 1.2.11 | Corrección de prototipos | 3h | 2015-01-12 10:00 | 2015-01-14 11:00 |  |  |  | 19.5d |  | EJTR,RGR,LCS,AATG |
| 62 | 1.2.12 | **Crear pruebas de integracion** | 0.5d | 2015-02-06 10:00 | 2015-02-10 11:00 |  |  |  | 14.88d |  |  |
| 63 | 1.2.12.1 | Crear prueba 1 | 2h | 2015-02-06 10:00 | 2015-02-06 14:00 | 60 |  |  | 14.88d | 0d | EJTR |
| 64 | 1.2.12.2 | Crear prueba 2 | 2h | 2015-02-09 10:00 | 2015-02-10 11:00 | 63 |  |  | 14.88d | 0d | EJTR |
| 65 | 1.2.13 | Revisión y corrección de cada una de las pruebas | 10h | 2015-02-11 10:00 | 2015-02-19 15:00 | 64 |  |  | 14.88d |  | EJTR,LCS |
| 66 | 1.2.14 | Crear diagrama entidad-relación | 1h | 2015-02-20 10:00 A | 2015-02-20 11:00 A | 65 | 100% |  |  |  | EJTR,RGR,LCS,AATG |
| 67 | 1.3 | **Codificación** | 12.62d | 2015-03-10 10:00 | 2015-06-18 11:00 |  |  |  | -0.25d | 0d |  |
| 68 | 1.3.1 | Creación de la base de datos | 11h | 2015-03-10 10:00 | 2015-03-19 15:00 | 149 |  |  | -0.25d | 0d | LCS,RGR |
| 69 | 1.3.2 | **Alta de alumno** | 1.25d | 2015-03-20 10:00 | 2015-03-30 11:00 |  |  |  | -0.25d | 0d |  |
| 70 | 1.3.2.1 | Componente en web | 7h | 2015-03-20 10:00 | 2015-03-30 11:00 | 68 |  |  | -0.25d | 0d | AATG |
| 71 | 1.3.3 | **Estado de actividades** | 3.25d | 2015-03-20 10:00 | 2015-04-15 11:00 |  |  |  | 5.62d |  |  |
| 72 | 1.3.3.1 | Componente en móvil | 13h | 2015-04-02 14:00 | 2015-04-15 11:00 | 73 |  |  | 5.62d | 0d | RGR |
| 73 | 1.3.3.2 | Componente en web | 13h | 2015-03-20 10:00 | 2015-04-02 11:00 | 68 |  |  | 5.62d | 0d | RGR |

Notes:
- 51: B
- 52: B
- 53: B
- 54: B
- 55: B
- 56: B
- 57: B
- 58: B
- 59: B
- 70: B
- 72: M
- 73: M

| ID | WBS | Task | Duration | Start | Finish | Predecessors | Total slack | Free slack | Responsable |
| --- | --- | --- | --- | --- | --- | --- | --- | --- | --- |
| 74 | 1.3.4 | **Alta de actividad** | 2.25d | 2015-04-02 14:00 | 2015-04-20 11:00 |  | -0.25d | 0d |  |
| 75 | 1.3.4.1 | Componente en móvil | 7h | 2015-04-14 10:00 | 2015-04-20 11:00 | 76 | -0.25d | 0d | AATG |
| 76 | 1.3.4.2 | Componente en web | 7h | 2015-04-02 14:00 | 2015-04-13 11:00 | 97 | -0.25d | 0d | AATG |
| 77 | 1.3.5 | **Acceso al sistema** | 1.75d | 2015-04-17 13:00 | 2015-05-01 11:00 |  | 5.62d |  |  |
| 78 | 1.3.5.1 | Componente en móvil | 7h | 2015-04-24 13:00 | 2015-05-01 11:00 | 79 | 5.62d | 0d | RGR |
| 79 | 1.3.5.2 | Componente en web | 7h | 2015-04-17 13:00 | 2015-04-24 11:00 | 100 | 5.62d | 0d | RGR |
| 80 | 1.3.6 | **Modalidad presencial** | 5.25d | 2015-03-20 10:00 | 2015-04-30 15:00 |  | 3.12d |  |  |
| 81 | 1.3.6.1 | Componente en móvil | 21h | 2015-04-10 10:00 | 2015-04-30 15:00 | 82 | 3.12d | 0d | LCS |
| 82 | 1.3.6.2 | Componente en web | 21h | 2015-03-20 10:00 | 2015-04-09 15:00 | 68 | 3.12d | 0d | LCS |
| 83 | 1.3.7 | **Modalidad no presencial** | 5.25d | 2015-04-23 14:00 | 2015-06-04 11:00 |  | -0.25d | 0d |  |
| 84 | 1.3.7.1 | Componente en móvil | 21h | 2015-05-14 14:00 | 2015-06-04 11:00 | 85 | -0.25d | 0d | AATG |
| 85 | 1.3.7.2 | Componente en web | 21h | 2015-04-23 14:00 | 2015-05-14 11:00 | 103 | -0.25d | 0d | AATG |
| 86 | 1.3.8 | **Agregar alumno al curso** | 2.25d | 2015-05-05 10:00 | 2015-05-21 15:00 |  | 3.12d |  |  |
| 87 | 1.3.8.1 | Componente en móvil | 7h | 2015-05-15 10:00 | 2015-05-21 15:00 | 88 | 3.12d | 0d | LCS |
| 88 | 1.3.8.2 | Componente en web | 7h | 2015-05-05 10:00 | 2015-05-14 15:00 | 109 | 3.12d | 0d | LCS |
| 89 | 1.3.9 | **Reporte de lista** | 2.62d | 2015-03-20 10:00 | 2015-04-09 15:00 |  | 5.38d |  |  |
| 90 | 1.3.9.1 | Componente en web | 21h | 2015-03-20 10:00 | 2015-04-09 15:00 | 68 | 5.38d | 0d | EJTR |
| 91 | 1.3.10 | **Constancia** | 2.62d | 2015-04-14 10:00 | 2015-05-04 11:00 |  | 5.38d |  |  |
| 92 | 1.3.10.1 | Componente en web | 21h | 2015-04-14 10:00 | 2015-05-04 11:00 | 118 | 5.38d | 0d | EJTR |
| 93 | 1.3.11 | Integración de Componentes | 13h | 2015-06-05 10:00 | 2015-06-18 11:00 | 111 | -0.25d | 0d | EJTR,RGR,LCS,AATG |
| 94 | 1.4 | **Pruebas por pares** | 8.62d | 2015-03-31 10:00 | 2015-06-05 14:00 |  | -0.25d | 0d |  |
| 95 | 1.4.1 | **Alta de alumno** | 0.38d | 2015-03-31 10:00 | 2015-04-02 11:00 |  | -0.25d | 0d |  |
| 96 | 1.4.1.1 | Aplicar pruebas | 1h | 2015-03-31 10:00 | 2015-03-31 11:00 | 70 | -0.25d | 0d | RGR |
| 97 | 1.4.1.2 | Generar documento | 2h | 2015-04-01 10:00 | 2015-04-02 11:00 | 96 | -0.25d | 0d | RGR |

Notes:
- 75: B
- 76: B
- 78: B
- 79: B
- 81: A
- 82: A
- 84: A
- 85: A
- 87: B
- 88: B
- 90: A
- 92: A
- 96: B
- 97: B

| ID | WBS | Task | Duration | Start | Finish | Predecessors | Total slack | Free slack | Responsable |
| --- | --- | --- | --- | --- | --- | --- | --- | --- | --- |
| 98 | 1.4.2 | **Estado de actividades** | 0.38d | 2015-04-16 10:00 | 2015-04-17 11:00 |  | 5.62d |  |  |
| 99 | 1.4.2.1 | Aplicar pruebas | 1h | 2015-04-16 10:00 | 2015-04-16 11:00 | 72 | 5.62d | 0d | AATG |
| 100 | 1.4.2.2 | Generar documento | 2h | 2015-04-16 14:00 | 2015-04-17 11:00 | 99 | 5.62d | 0d | AATG |
| 101 | 1.4.3 | **Alta de actividad** | 0.38d | 2015-04-21 10:00 | 2015-04-23 11:00 |  | -0.25d | 0d |  |
| 102 | 1.4.3.1 | Aplicar pruebas | 1h | 2015-04-21 10:00 | 2015-04-21 11:00 | 75 | -0.25d | 0d | RGR |
| 103 | 1.4.3.2 | Generar documento | 2h | 2015-04-22 10:00 | 2015-04-23 11:00 | 102 | -0.25d | 0d | RGR |
| 104 | 1.4.4 | **Acceso al sistema** | 0.38d | 2015-05-01 13:00 | 2015-05-05 11:00 |  | 5.62d |  |  |
| 105 | 1.4.4.1 | Aplicar pruebas | 1h | 2015-05-01 13:00 | 2015-05-01 14:00 | 78 | 5.62d | 0d | AATG |
| 106 | 1.4.4.2 | Generar documento | 2h | 2015-05-04 10:00 | 2015-05-05 11:00 | 105 | 5.62d |  | AATG |
| 107 | 1.4.5 | **Modalidad presencial** | 0.38d | 2015-05-01 10:00 | 2015-05-04 11:00 |  | 3.12d |  |  |
| 108 | 1.4.5.1 | Aplicar pruebas | 1h | 2015-05-01 10:00 | 2015-05-01 11:00 | 81 | 3.12d | 0d | EJTR |
| 109 | 1.4.5.2 | Generar documento | 2h | 2015-05-01 13:00 | 2015-05-04 11:00 | 108 | 3.12d | 0d | EJTR |
| 110 | 1.4.6 | **Modalidad no presencial** | 0.38d | 2015-06-04 14:00 | 2015-06-05 14:00 |  | -0.25d | 0d |  |
| 111 | 1.4.6.1 | Aplicar pruebas | 1h | 2015-06-04 14:00 | 2015-06-04 15:00 | 84 | -0.25d | 0d | RGR |
| 112 | 1.4.6.2 | Generar documento | 2h | 2015-06-05 10:00 | 2015-06-05 14:00 | 111 | 1.5d |  | RGR |
| 113 | 1.4.7 | **Agregar alumno al curso** | 0.38d | 2015-05-22 10:00 | 2015-05-25 11:00 |  | 3.12d |  |  |
| 114 | 1.4.7.1 | Aplicar pruebas | 1h | 2015-05-22 10:00 | 2015-05-22 11:00 | 87 | 3.12d | 0d | EJTR |
| 115 | 1.4.7.2 | Generar documento | 2h | 2015-05-22 13:00 | 2015-05-25 11:00 | 114 | 3.12d |  | EJTR |
| 116 | 1.4.8 | **Reporte de lista** | 0.38d | 2015-04-10 10:00 | 2015-04-13 11:00 |  | 5.38d |  |  |
| 117 | 1.4.8.1 | Aplicar pruebas | 1h | 2015-04-10 10:00 | 2015-04-10 11:00 | 90 | 5.38d | 0d | LCS |
| 118 | 1.4.8.2 | Generar documento | 2h | 2015-04-10 13:00 | 2015-04-13 11:00 | 117 | 5.38d | 0d | LCS |
| 119 | 1.4.9 | **Constancia** | 0.38d | 2015-05-05 10:00 | 2015-05-07 11:00 |  | 5.38d |  |  |
| 120 | 1.4.9.1 | Aplicar pruebas | 1h | 2015-05-05 10:00 | 2015-05-05 11:00 | 92 | 5.38d | 0d | LCS |
| 121 | 1.4.9.2 | Generar documento | 2h | 2015-05-06 10:00 | 2015-05-07 11:00 | 120 | 5.38d |  | LCS |

Notes:
- 99: B
- 100: B
- 102: B
- 103: B
- 105: B
- 106: B
- 108: B
- 109: B
- 111: B
- 112: B
- 114: B
- 115: B
- 117: B
- 118: B
- 120: B
- 121: B

| ID | WBS | Task | Type | Duration | Start | Finish | Predecessors | Complete | Remaining | Total slack | Free slack | Constraint | Calendar | Responsable |
| --- | --- | --- | --- | --- | --- | --- | --- | --- | --- | --- | --- | --- | --- | --- |
| 122 | 1.5 | **Pruebas de Integración** |  | 0.38d | 2015-06-18 14:00 | 2015-06-19 14:00 |  |  |  | -0.25d | 0d |  |  |  |
| 123 | 1.5.1 | Aplicar prueba 1 |  | 1h | 2015-06-18 14:00 | 2015-06-18 15:00 | 93 |  |  | -0.25d | 0d |  |  | AATG |
| 124 | 1.5.2 | Generar documento |  | 2h | 2015-06-19 10:00 | 2015-06-19 14:00 | 123 |  |  | -0.25d | 0d |  |  | AATG |
| 125 | 1.5.3 | Aplicar prueba 2 |  | 1h | 2015-06-18 14:00 | 2015-06-18 15:00 | 93 |  |  | -0.25d | 0d |  |  | EJTR |
| 126 | 1.5.4 | Generar documento |  | 2h | 2015-06-19 10:00 | 2015-06-19 14:00 | 125 |  |  | -0.25d | 0d |  |  | EJTR |
| 127 | 1.5.5 | Aplicar prueba 3 |  | 1h | 2015-06-18 14:00 | 2015-06-18 15:00 | 93 |  |  | -0.25d | 0d |  |  | LCS |
| 128 | 1.5.6 | Generar documento |  | 2h | 2015-06-19 10:00 | 2015-06-19 14:00 | 127 |  |  | -0.25d | 0d |  |  | LCS |
| 129 | 1.6 | **Tareas administrativas** |  | 20.75d? | 2014-09-24 16:00 A | 2015-03-09 11:00 |  | 4% | 19.89d? | 12.75d |  |  |  |  |
| 130 | 1.6.1 | **Junta de Estatus** |  | 19.5d | 2014-09-24 16:00 A | 2014-12-17 09:00 |  | 29% | 13.93d | 0d |  |  | 3Horas |  |
| 131 | 1.6.1.1 | Junta de Estatus 1 | manual | 1h | 2014-09-24 16:00 A | 2014-09-24 17:00 A |  | 100% |  |  |  | start no earlier than 2014-09-24 08:00 | 3Horas |  |
| 132 | 1.6.1.2 | Junta de Estatus 2 | manual | 1h | 2014-10-08 08:00 A | 2014-10-08 09:00 A |  | 100% |  |  |  | start no earlier than 2014-10-08 08:00 | 3Horas |  |
| 133 | 1.6.1.3 | Junta de Estatus 3 | manual | 1h | 2014-10-22 08:00 | 2014-10-22 09:00 |  |  |  |  |  | start no earlier than 2014-10-22 08:00 | 3Horas |  |
| 134 | 1.6.1.4 | Junta de Estatus 4 | manual | 1h | 2014-11-05 08:00 | 2014-11-05 09:00 |  |  |  |  |  | start no earlier than 2014-11-05 08:00 | 3Horas |  |
| 135 | 1.6.1.5 | Junta de Estatus 5 | manual | 1h | 2014-11-19 08:00 | 2014-11-19 09:00 |  |  |  |  |  | start no earlier than 2014-11-19 08:00 | 3Horas |  |
| 136 | 1.6.1.6 | Junta de Estatus 6 | manual | 1h | 2014-12-03 08:00 | 2014-12-03 09:00 |  |  |  |  |  | start no earlier than 2014-12-03 08:00 | 3Horas |  |
| 137 | 1.6.1.7 | Junta de Estatus 7 | manual | 1h | 2014-12-17 08:00 | 2014-12-17 09:00 |  |  |  |  |  | start no earlier than 2014-12-17 08:00 | 3Horas |  |
| 138 | 1.6.2 | **Investigaciones** |  | 0.5d | 2015-02-20 13:00 | 2015-02-25 11:00 |  |  |  | -0.25d | 0d |  |  |  |
| 139 | 1.6.2.1 | Sincronización de bases de datos en móviles |  | 1h | 2015-02-20 13:00 | 2015-02-20 14:00 | 66 |  |  | 14.38d | 0d |  |  | RGR |
| 140 | 1.6.2.2 | Generar documento en PHP |  | 2h | 2015-02-20 13:00 | 2015-02-23 11:00 | 66 |  |  | 14.5d |  |  |  | LCS |
| 141 | 1.6.2.3 | Envío de información atraves de formularios |  | 1h | 2015-02-20 13:00 | 2015-02-20 14:00 | 66 |  |  | 14.62d |  |  |  | AATG |
| 142 | 1.6.2.4 | Enlace de bases de datos a un móvil |  | 2h | 2015-02-23 10:00 | 2015-02-24 11:00 | 139 |  |  | 14.38d |  |  |  | RGR |
| 143 | 1.6.2.5 | Cuestiones de seguridad web |  | 4h | 2015-02-20 13:00 | 2015-02-25 11:00 | 66 |  |  | -0.25d | 0d |  |  | EJTR |
| 144 | 1.6.3 | **Capacitaciones** |  | 1.5d | 2015-02-26 10:00 | 2015-03-09 11:00 |  |  |  | -0.25d | 0d |  |  |  |
| 145 | 1.6.3.1 | PHP |  | 3h | 2015-02-26 10:00 | 2015-02-27 11:00 | 143 |  |  | -0.25d | 0d |  |  | EJTR,RGR,LCS,AATG |
| 146 | 1.6.3.2 | JS |  | 1h | 2015-02-27 13:00 | 2015-02-27 14:00 | 145 |  |  | -0.25d | 0d |  |  | EJTR,RGR,LCS,AATG |
| 147 | 1.6.3.3 | Base de datos |  | 4h | 2015-03-02 10:00 | 2015-03-05 11:00 | 146 |  |  | -0.25d | 0d |  |  | EJTR,RGR,LCS,AATG |
| 148 | 1.6.3.4 | Programación android |  | 2h | 2015-03-05 14:00 | 2015-03-06 11:00 | 147 |  |  | -0.25d | 0d |  |  | EJTR,RGR,LCS,AATG |
| 149 | 1.6.3.5 | Aplicarlo en PHP, Java y JS |  | 2h | 2015-03-06 13:00 | 2015-03-09 11:00 | 148 |  |  | -0.25d | 0d |  |  | EJTR,RGR,LCS,AATG |

Notes:
- 123: B
- 124: B
- 125: B
- 126: B
- 127: B
- 128: B

| ID | WBS | Task | Duration | Start | Finish | Total slack |
| --- | --- | --- | --- | --- | --- | --- |
| 150 | 1.6.4 | **Juntas con cliente** | 8h | 2015-01-12 10:00 | 2015-01-19 11:00 |  |
| 151 | 1.6.4.1 | Presentacion de prototipos | 1h | 2015-01-12 10:00 | 2015-01-12 11:00 | 0.88d |
| 152 | 1.6.4.2 | Corrección de prototipos | 1h | 2015-01-12 10:00 | 2015-01-12 11:00 | 0.88d |
| 153 | 1.6.4.3 | Avance vista de administrador | 2h | 2015-01-12 10:00 | 2015-01-13 11:00 | 0.75d |
| 154 | 1.6.4.4 | Avance vista de coordinador | 2h | 2015-01-12 10:00 | 2015-01-13 11:00 | 0.75d |
| 155 | 1.6.4.5 | Avance versión móvil | 2h | 2015-01-12 10:00 | 2015-01-13 11:00 | 0.75d |
| 156 | 1.6.4.6 | Implementación de Software | 3h | 2015-01-12 10:00 | 2015-01-14 11:00 | 0.62d |
| 157 | 1.6.5 | Creacción del manual de usuario | 1d? | 2015-01-12 10:00 | 2015-01-19 11:00 | 18.88d |
